# 亲情电话应用端软件

Schedule from a web Gantt chart, 2024-02-01 to 2025-03-26.
Sundays are off

## Schedule

| ID | WBS | Task | Duration | Start | Finish | Predecessors | inPeople | Status |
| --- | --- | --- | --- | --- | --- | --- | --- | --- |
| 2 | 1 | **需求** | 11d | 2024-12-23 | 2025-01-03 |  |  |  |
| 3 | 1.1 | 需求分析与原型设计 | 5d | 2024-12-23 | 2024-12-27 |  | 邓振祥 |  |
| 4 | 1.2 | 原型评审与修订 | 6d | 2024-12-30 | 2025-01-04 | 3 | 邓振祥 | waiting |
| 5 | 2 | **设计** | 9d | 2025-01-07 | 2025-01-16 |  |  |  |
| 6 | 2.1 | MQTT协议设计与评审 | 3d | 2025-01-07 | 2025-01-09 | 4 | 邓振祥 | waiting |
| 7 | 2.2 | 公众号H5与WEB端构架与UI选型 | 1d | 2025-01-10 | 2025-01-10 | 6 |  | waiting |
| 8 | 2.3 | 数据库设计 | 3d | 2025-01-11 | 2025-01-14 | 7 | 邓振祥 | waiting |
| 9 | 2.4 | 整体技术框架搭建 | 2d | 2025-01-15 | 2025-01-16 | 8 | 邓振祥 | waiting |
| 10 | 3 | **开发与联调** | 59d | 2025-01-17 | 2025-03-26 |  |  |  |
| 11 | 3.1 | 平台管理前后端开发（Web） | 5d | 2025-01-17 | 2025-01-22 | 9 | 邓振祥 | waiting |
| 12 | 3.2 | 服务商前后端开发（Web） | 10d | 2025-01-23 | 2025-02-03 | 11 | 邓振祥 | waiting |
| 13 | 3.3 | 首页 | 2d | 2025-02-04 | 2025-02-05 | 12 | 邓振祥 | waiting |
| 14 | 3.4 | 设备管理 | 2d | 2025-02-06 | 2025-02-07 | 13 | 邓振祥 | waiting |
| 15 | 3.5 | 人员管理 | 4d | 2025-02-08 | 2025-02-12 | 14 | 邓振祥 | waiting |
| 16 | 3.6 | 通行规则 | 2d | 2025-02-13 | 2025-02-14 | 15 | 邓振祥 | waiting |
| 17 | 3.7 | 访客预约 | 3d | 2025-02-15 | 2025-02-18 | 16 | 邓振祥 | waiting |
| 18 | 3.8 | 可视对讲 | 3d | 2025-02-19 | 2025-02-21 | 17 | 邓振祥 | waiting |
| 19 | 3.9 | 通行记录 | 2d | 2025-02-22 | 2025-02-24 | 18 | 邓振祥 | waiting |
| 20 | 3.10 | 开门 | 2d | 2025-02-25 | 2025-02-26 | 19 | 邓振祥 | waiting |
| 21 | 3.11 | 通知 | 3d | 2025-02-27 | 2025-03-01 | 20 | 邓振祥 | waiting |
| 22 | 3.12 | 我的 | 2d | 2025-03-03 | 2025-03-04 | 21 | 邓振祥 | waiting |
| 23 | 3.13 | 对讲 | 3d | 2025-03-05 | 2025-03-07 | 22 | 邓振祥 | waiting |
| 24 | 3.14 | 后台与APP端联调 | 9d | 2025-03-08 | 2025-03-18 | 23 | 邓振祥 | waiting |
| 25 | 3.15 | 与设备端联调 | 7d | 2025-03-19 | 2025-03-26 | 24 |  | waiting |

| ID | WBS | Task | Duration | Start | Finish | Predecessors | inPeople | Status |
| --- | --- | --- | --- | --- | --- | --- | --- | --- |
| 26 | 4 | **测试** | 17d | 2024-02-01 | 2024-02-20 |  |  |  |
| 27 | 4.1 | 首轮测试与BUG修复 | 6d | 2024-02-01 | 2024-02-07 |  | 测试部 |  |
| 28 | 4.2 | 第二轮测试与BUG修复 | 5d | 2024-02-19 | 2024-02-23 |  | 测试部 |  |
| 29 | 5 | **发布** | 6d | 2024-02-19 | 2024-02-24 |  |  |  |
| 30 | 5.1 | 文档准备 | 5d | 2024-02-19 | 2024-02-23 |  | 产品部 |  |
| 31 | 5.2 | 生产环境部署 | 1d | 2024-02-26 | 2024-02-26 | 28 | 邓振祥 | waiting |
